Schedule from MS Project, 2011-11-09 to 2012-02-21.
鍖椾含鎭掑崕

## Calendars

- 标准: Mon-Fri 08:00-12:00, 13:00-17:00; Sat-Sun off.

## Schedule

| ID | WBS | Task | Duration | Start | Finish | Predecessors | Total slack | Free slack |
| --- | --- | --- | --- | --- | --- | --- | --- | --- |
| 1 | 1 | **项目部工程核算系统开发计划** | 75d | 2011-11-09 | 2012-02-21 |  | 0d |  |
| 2 | 1.1 | **需求阶段** | 10d | 2011-11-09 | 2011-11-22 |  | 0d |  |
| 3 | 1.1.1 | 需求调研 | 1d | 2011-11-09 | 2011-11-09 |  | 0d |  |
| 4 | 1.1.2 | **需求分析** | 8d | 2011-11-10 | 2011-11-21 | 3 | 0d |  |
| 5 | 1.1.2.1 | 界面原型设计 | 3d | 2011-11-10 | 2011-11-14 |  | 0d |  |
| 6 | 1.1.2.2 | 业务规则分析 | 2d | 2011-11-15 | 2011-11-16 | 5 | 0d |  |
| 7 | 1.1.2.3 | 业务数据项分析 | 2d | 2011-11-17 | 2011-11-18 | 6 | 0d |  |
| 8 | 1.1.2.4 | 非功能性需求分析 | 1d | 2011-11-21 | 2011-11-21 | 7 | 0d |  |
| 9 | 1.1.3 | **需求确认** | 1d | 2011-11-22 | 2011-11-22 | 4 | 0d |  |
| 10 | 1.1.3.1 | 需求范围确认 | 1d | 2011-11-22 | 2011-11-22 |  | 0d |  |
| 11 | 1.1.3.2 | 界面原型确认 | 1d | 2011-11-22 | 2011-11-22 |  | 0d |  |
| 12 | 1.1.3.3 | 业务规则及数据项确认 | 1d | 2011-11-22 | 2011-11-22 |  | 0d |  |
| 13 | 1.1.3.4 | 非功能性需求确认 | 1d | 2011-11-22 | 2011-11-22 |  | 0d |  |
| 14 | 1.2 | **设计阶段** | 12d | 2011-11-23 | 2011-12-08 | 2 | 0d |  |
| 15 | 1.2.1 | 界面交互设计 | 3d | 2011-11-23 | 2011-11-25 |  | 0d |  |
| 16 | 1.2.2 | 系统体系结构设计 | 4d | 2011-11-28 | 2011-12-01 | 15 | 0d |  |
| 17 | 1.2.3 | 数据结构设计 | 3d | 2011-12-02 | 2011-12-06 | 16 | 0d |  |
| 18 | 1.2.4 | 测试用例设计 | 2d | 2011-12-07 | 2011-12-08 | 17 | 0d |  |
| 19 | 1.3 | **开发阶段** | 26d | 2011-12-09 | 2012-01-13 | 14 | 0d |  |
| 20 | 1.3.1 | 开发环境搭建 | 2d | 2011-12-09 | 2011-12-12 |  | 0d |  |
| 21 | 1.3.2 | **v1.0版本功能开发** | 15d | 2011-12-13 | 2012-01-02 |  | 0d |  |
| 22 | 1.3.2.1 | **系统管理功能开发** | 6d | 2011-12-13 | 2011-12-20 | 20 | 0d |  |
| 23 | 1.3.2.1.1 | 登录功能 | 2d | 2011-12-13 | 2011-12-14 |  | 0d |  |
| 24 | 1.3.2.1.2 | 权限功能 | 2d | 2011-12-15 | 2011-12-16 | 23 | 0d |  |
| 25 | 1.3.2.1.3 | 用户信息管理 | 2d | 2011-12-19 | 2011-12-20 | 24 | 0d |  |
| 26 | 1.3.2.2 | 单项目统计功能开发 | 4d | 2011-12-21 | 2011-12-26 | 22 | 1d | 0d |
| 27 | 1.3.2.3 | 合同项目信息功能开发 | 2d | 2011-12-27 | 2011-12-28 | 26 | 1d | 0d |
| 28 | 1.3.2.4 | 合同补充协议功能开发 | 2d | 2011-12-29 | 2011-12-30 | 27 | 1d |  |
| 29 | 1.3.2.5 | 甲方开票功能开发 | 2d | 2011-12-21 | 2011-12-22 | 22 | 0d |  |
| 30 | 1.3.2.6 | 客户开票功能开发 | 2d | 2011-12-23 | 2011-12-26 | 29 | 0d |  |
| 31 | 1.3.2.7 | 收款情况开发 | 2d | 2011-12-27 | 2011-12-28 | 30 | 0d |  |
| 32 | 1.3.2.8 | 付款情况功能开发 | 2d | 2011-12-29 | 2011-12-30 | 31 | 0d |  |
| 33 | 1.3.2.9 | 结算参数设置 | 1d | 2012-01-02 | 2012-01-02 | 32 | 0d |  |

| ID | WBS | Task | Type | Duration | Start | Finish | Predecessors | Total slack | Free slack |
| --- | --- | --- | --- | --- | --- | --- | --- | --- | --- |
| 34 | 1.3.3 | **v2.0版本功能开发** |  | 9d | 2012-01-03 | 2012-01-13 | 21 | 0d |  |
| 35 | 1.3.3.1 | 型材功能开发 |  | 2d | 2012-01-03 | 2012-01-04 |  | 0d |  |
| 36 | 1.3.3.2 | 往来欠款功能开发 |  | 3d | 2012-01-05 | 2012-01-09 | 35 | 0d |  |
| 37 | 1.3.3.3 | 多项目汇总功能开发 |  | 4d | 2012-01-10 | 2012-01-13 | 36 | 0d |  |
| 38 | 1.3.3.4 | 数据导出功能开发 |  | 2d | 2012-01-03 | 2012-01-04 |  | 1d | 0d |
| 39 | 1.3.3.5 | 数据备份功能开发 |  | 3d | 2012-01-05 | 2012-01-09 | 38 | 1d | 0d |
| 40 | 1.3.3.6 | 数据恢复功能开发 |  | 3d | 2012-01-10 | 2012-01-12 | 39 | 1d |  |
| 41 | 1.4 | **测试阶段** |  | 18d | 2012-01-03 | 2012-01-26 |  | 0d |  |
| 42 | 1.4.1 | **v1.0版本功能测试** |  | 10d | 2012-01-03 | 2012-01-16 | 21 | 8d |  |
| 43 | 1.4.1.1 | 发布v1.0版本功能 |  | 1d | 2012-01-03 | 2012-01-03 |  | 8d | 0d |
| 44 | 1.4.1.2 | 构建测试数据 |  | 2d | 2012-01-04 | 2012-01-05 | 43 | 8d | 0d |
| 45 | 1.4.1.3 | 功能测试 |  | 4d | 2012-01-06 | 2012-01-11 | 44 | 8d | 0d |
| 46 | 1.4.1.4 | 测试问题修改 |  | 3d | 2012-01-12 | 2012-01-16 | 45 | 8d |  |
| 47 | 1.4.2 | **v2.0版本功能测试** |  | 7d | 2012-01-16 | 2012-01-24 | 34 | 0d |  |
| 48 | 1.4.2.1 | 发布v2.0版本功能 |  | 1d | 2012-01-16 | 2012-01-16 |  | 0d |  |
| 49 | 1.4.2.2 | 构建测试数据 |  | 1d | 2012-01-17 | 2012-01-17 | 48 | 0d |  |
| 50 | 1.4.2.3 | 功能测试 |  | 3d | 2012-01-18 | 2012-01-20 | 49 | 0d |  |
| 51 | 1.4.2.4 | 测试问题修改 |  | 2d | 2012-01-23 | 2012-01-24 | 50 | 0d |  |
| 52 | 1.4.3 | 测试结果分析 |  | 1d | 2012-01-25 | 2012-01-25 | 47 | 0d |  |
| 53 | 1.4.4 | 测试结果确认 |  | 1d | 2012-01-26 | 2012-01-26 | 52 | 0d |  |
| 54 | 1.5 | **实施阶段** |  | 18d | 2012-01-26 | 2012-02-21 | 41 | 0d |  |
| 55 | 1.5.1 | 服务器就位(推荐配置：CPU主频在2.0GHz以上，内存在2GB以上，硬盘在100GB以上） | milestone | 0d | 2012-01-26 | 2012-01-26 |  | 0d |  |
| 56 | 1.5.2 | 现场部署安装 |  | 1d | 2012-01-27 | 2012-01-27 | 55 | 0d |  |
| 57 | 1.5.3 | 系统培训 |  | 1d | 2012-01-30 | 2012-01-30 | 56 | 0d |  |
| 58 | 1.5.4 | 系统试运行 |  | 15d | 2012-01-31 | 2012-02-20 | 57 | 0d |  |
| 59 | 1.5.5 | 系统验收 |  | 1d | 2012-02-21 | 2012-02-21 | 58 | 0d |  |
